# Proyecto Sala Capacitacion

How a schedule from MS Project changed from version to version. A marks actual dates.

## Version 1 (saved 2008-07-11, file Proyecto_Sala_Capacitacion.mpp)

Note of the change: Add everything

| ID | WBS | Task | Duration | Start | Finish | Predecessors | Total float | Constraint |
| --- | --- | --- | --- | --- | --- | --- | --- | --- |
| 1 | 1 | **Sala de Capacitación Informática** | 43d? | 2008-06-30 | 2008-08-27 |  | 0d |  |
| 2 |  | Asignación proyecto | 1d? | 2008-06-30 | 2008-06-30 |  | 42d |  |
| 3 |  | Dinero para la Adquisición De Equipos | 0d | 2008-06-30 | 2008-06-30 |  | 0d |  |
| 4 | 1.3 | **Adquisición de Recursos** | 25d | 2008-06-30 | 2008-08-01 |  | 0d |  |
| 5 |  | Compra de Recursos | 15d | 2008-06-30 | 2008-07-18 | 3 | 0d |  |
| 6 |  | Entrega de Equipos por proveedores | 10d | 2008-07-21 | 2008-08-01 | 7, 5 | 0d |  |
| 7 | 1.4 | **Acondicionamiento de la Sala** | 15d | 2008-06-30 | 2008-07-18 |  | 0d |  |
| 8 |  | Instalaciones Eléctricas | 5d | 2008-06-30 | 2008-07-04 |  | 2d |  |
| 9 |  | Instalaciones de Red | 5d | 2008-07-07 | 2008-07-11 | 8 | 2d |  |
| 10 |  | Instalación de Aire Acondicionado | 3d | 2008-07-07 | 2008-07-09 | 8 | 4d |  |
| 11 |  | Instalación de Iluminación | 5d | 2008-07-07 | 2008-07-11 | 8 | 2d |  |
| 12 |  | Trabajos de acabado y pintura | 3d | 2008-07-14 | 2008-07-16 | 8, 9, 10, 11 | 2d |  |
| 13 |  | Supervision y pruebas de Acondicionamiento e infraestructura sala | 1d | 2008-07-18 | 2008-07-18 |  | 0d | start no earlier than 2008-07-18 |
| 14 | 1.5 | **Colocación de Mobiliario** | 8d | 2008-07-21 | 2008-07-30 |  | 2d |  |
| 15 |  | Mesas | 4d | 2008-07-21 | 2008-07-24 | 7 | 2d |  |
| 16 |  | Sillas | 4d | 2008-07-25 | 2008-07-30 | 7, 15 | 2d |  |
| 17 |  | Escritorio | 2d | 2008-07-21 | 2008-07-22 | 7 | 8d |  |
| 18 | 1.6 | **Instalación Y Configuración De Equipos** | 18d | 2008-08-04 | 2008-08-27 | 6 | 0d |  |
| 19 |  | Instalación de equipos (PCs y Video) | 3d | 2008-08-04 | 2008-08-06 | 14 | 0d |  |
| 20 |  | Configuración de Conexión a Red | 5d | 2008-08-07 | 2008-08-13 | 19, 9 | 0d |  |
| 21 |  | Actualización de Software | 5d | 2008-08-14 | 2008-08-20 | 20 | 0d |  |
| 22 |  | Instalación de Deep Freeze | 5d | 2008-08-21 | 2008-08-27 | 21 | 0d |  |
| 23 |  | Supervisión y pruebas de Instalación y Configuración de Equipos | 1d | 2008-08-26 | 2008-08-26 |  | 1d | start no earlier than 2008-08-26 |
| 24 | 1.7 | **Pago Personal** | 28d | 2008-07-18 | 2008-08-27 |  | 1d |  |
| 25 |  | Pago Semana 3 (ver Flujos Monetarios) | 0d | 2008-07-18 | 2008-07-18 |  | 29d | start no earlier than 2008-07-18 |
| 26 |  | Pago Semana 4 (ver Flujos Monetarios) | 0d | 2008-07-25 | 2008-07-25 |  | 24d | start no earlier than 2008-07-25 |
| 27 |  | Pago Semana 5 (ver Flujos Monetarios) | 0d | 2008-08-01 | 2008-08-01 |  | 19d | start no earlier than 2008-08-01 |
| 28 |  | Pago Semana 6 (ver Flujos Monetarios) | 0d | 2008-08-08 | 2008-08-08 |  | 14d | start no earlier than 2008-08-08 |
| 29 |  | Pago Semana 7 (ver Flujos Monetarios) | 0d | 2008-08-15 | 2008-08-15 |  | 9d | start no earlier than 2008-08-15 |
| 30 |  | Pago Semana 8 (ver Flujos Monetarios) | 0d | 2008-08-22 | 2008-08-22 |  | 4d | start no earlier than 2008-08-22 |
| 31 |  | Pago Semana 9 (ver Flujos Monetarios) | 0d | 2008-08-27 | 2008-08-27 |  | 1d | start no earlier than 2008-08-27 |
| 32 | 1.8 | **Reuniones** | 34d | 2008-07-11 | 2008-08-27 |  | 0d |  |
| 33 |  | Reunión 1: Acondicionamiento Sala | 0d | 2008-07-11 | 2008-07-11 |  | 34d | start no earlier than 2008-07-11 |
| 34 |  | Reunión 2: Otros Acond Sala y Muebles | 0d | 2008-07-25 | 2008-07-25 |  | 24d | start no earlier than 2008-07-25 |
| 35 |  | Reunión 3: Instalación equipos | 0d | 2008-08-08 | 2008-08-08 |  | 14d | start no earlier than 2008-08-08 |
| 36 |  | Reunión 4: Otros Instal. Equipos | 0d | 2008-08-22 | 2008-08-22 |  | 3d | finish no earlier than 2008-08-22 |
| 37 |  | Reunión de Cierre e informe final | 0d | 2008-08-27 | 2008-08-27 | 18 | 0d | finish no earlier than 2008-08-27 |

## Version 2 (data date 2008-07-17, saved 2008-07-18, file lineadeseguimiento.mpp)

Note of the change: Add everything

Last finish stays 2008-08-27.

Changed:

| ID | Task | Other |
| --- | --- | --- |
| 1 | **Sala de Capacitación Informática** | baseline start none → 2008-06-30; baseline finish none → 2008-08-27 |
| 2 | Asignación proyecto | baseline start none → 2008-06-30; baseline finish none → 2008-06-30 |
| 3 | Dinero para la Adquisición De Equipos | baseline start none → 2008-06-30; baseline finish none → 2008-06-30 |
| 4 | **Adquisición de Recursos** | baseline start none → 2008-06-30; baseline finish none → 2008-08-01 |
| 5 | Compra de Recursos | baseline start none → 2008-06-30; baseline finish none → 2008-07-18 |
| 6 | Entrega de Equipos por proveedores | baseline start none → 2008-07-21; baseline finish none → 2008-08-01 |
| 7 | **Acondicionamiento de la Sala** | baseline start none → 2008-06-30; baseline finish none → 2008-07-18 |
| 8 | Instalaciones Eléctricas | baseline start none → 2008-06-30; baseline finish none → 2008-07-04 |
| 9 | Instalaciones de Red | baseline start none → 2008-07-07; baseline finish none → 2008-07-11 |
| 10 | Instalación de Aire Acondicionado | baseline start none → 2008-07-07; baseline finish none → 2008-07-09 |
| 11 | Instalación de Iluminación | baseline start none → 2008-07-07; baseline finish none → 2008-07-11 |
| 12 | Trabajos de acabado y pintura | baseline start none → 2008-07-14; baseline finish none → 2008-07-16 |
| 13 | Supervision y pruebas de Acondicionamiento e infraestructura sala | baseline start none → 2008-07-18; baseline finish none → 2008-07-18 |
| 14 | **Colocación de Mobiliario** | baseline start none → 2008-07-21; baseline finish none → 2008-07-30 |
| 15 | Mesas | baseline start none → 2008-07-21; baseline finish none → 2008-07-24 |
| 16 | Sillas | baseline start none → 2008-07-25; baseline finish none → 2008-07-30 |
| 17 | Escritorio | baseline start none → 2008-07-21; baseline finish none → 2008-07-22 |
| 18 | **Instalación Y Configuración De Equipos** | baseline start none → 2008-08-04; baseline finish none → 2008-08-27 |
| 19 | Instalación de equipos (PCs y Video) | baseline start none → 2008-08-04; baseline finish none → 2008-08-06 |
| 20 | Configuración de Conexión a Red | baseline start none → 2008-08-07; baseline finish none → 2008-08-13 |
| 21 | Actualización de Software | baseline start none → 2008-08-14; baseline finish none → 2008-08-20 |
| 22 | Instalación de Deep Freeze | baseline start none → 2008-08-21; baseline finish none → 2008-08-27 |
| 23 | Supervisión y pruebas de Instalación y Configuración de Equipos | baseline start none → 2008-08-26; baseline finish none → 2008-08-26 |
| 24 | **Pago Personal** | baseline start none → 2008-07-18; baseline finish none → 2008-08-27 |
| 25 | Pago Semana 3 (ver Flujos Monetarios) | baseline start none → 2008-07-18; baseline finish none → 2008-07-18 |
| 26 | Pago Semana 4 (ver Flujos Monetarios) | baseline start none → 2008-07-25; baseline finish none → 2008-07-25 |
| 27 | Pago Semana 5 (ver Flujos Monetarios) | baseline start none → 2008-08-01; baseline finish none → 2008-08-01 |
| 28 | Pago Semana 6 (ver Flujos Monetarios) | baseline start none → 2008-08-08; baseline finish none → 2008-08-08 |
| 29 | Pago Semana 7 (ver Flujos Monetarios) | baseline start none → 2008-08-15; baseline finish none → 2008-08-15 |
| 30 | Pago Semana 8 (ver Flujos Monetarios) | baseline start none → 2008-08-22; baseline finish none → 2008-08-22 |
| 31 | Pago Semana 9 (ver Flujos Monetarios) | baseline start none → 2008-08-27; baseline finish none → 2008-08-27 |
| 32 | **Reuniones** | baseline start none → 2008-07-11; baseline finish none → 2008-08-27 |
| 33 | Reunión 1: Acondicionamiento Sala | baseline start none → 2008-07-11; baseline finish none → 2008-07-11 |
| 34 | Reunión 2: Otros Acond Sala y Muebles | baseline start none → 2008-07-25; baseline finish none → 2008-07-25 |
| 35 | Reunión 3: Instalación equipos | baseline start none → 2008-08-08; baseline finish none → 2008-08-08 |
| 36 | Reunión 4: Otros Instal. Equipos | baseline start none → 2008-08-22; baseline finish none → 2008-08-22 |
| 37 | Reunión de Cierre e informe final | baseline start none → 2008-08-27; baseline finish none → 2008-08-27 |

## Version 3 (saved 2008-07-18, file Proyecto_Sala_Capacitacion-Alix-IIseguimiento.mpp)

Note of the change: Add everything

Last finish 2008-08-27 → 2008-09-16 (+20d). Complete tasks 0 → 30.

Changed:

| ID | Task | Start | Finish | Duration | Complete | Total float | Other |
| --- | --- | --- | --- | --- | --- | --- | --- |
| 1 | **Sala de Capacitación Informática** | 2008-06-30 A | 2008-08-27 → 2008-09-16 A (+20d) | 43d? → 57d? | 0% → 100% | 0d → none |  |
| 2 | Asignación proyecto | 2008-06-30 A | 2008-06-30 A |  | 0% → 100% | 42d → none |  |
| 3 | Dinero para la Adquisición De Equipos | 2008-06-30 A | 2008-06-30 A |  | 0% → 100% | 0d → none |  |
| 4 | **Adquisición de Recursos** | 2008-06-30 A | 2008-08-01 A |  | 0% → 100% | 0d → none |  |
| 5 | Compra de Recursos | 2008-06-30 A | 2008-07-18 A |  | 0% → 100% | 0d → none |  |
| 6 | Entrega de Equipos por proveedores | 2008-07-21 A | 2008-08-01 A |  | 0% → 100% | 0d → none |  |
| 7 | **Acondicionamiento de la Sala** | 2008-06-30 A | 2008-07-18 A |  | 0% → 100% | 0d → none |  |
| 8 | Instalaciones Eléctricas | 2008-06-30 A | 2008-07-04 A |  | 0% → 100% | 2d → none |  |
| 9 | Instalaciones de Red | 2008-07-07 A | 2008-07-11 A |  | 0% → 100% | 2d → none |  |
| 10 | Instalación de Aire Acondicionado | 2008-07-07 A | 2008-07-09 A |  | 0% → 100% | 4d → none |  |
| 11 | Instalación de Iluminación | 2008-07-07 A | 2008-07-11 A |  | 0% → 100% | 2d → none |  |
| 12 | Trabajos de acabado y pintura | 2008-07-14 A | 2008-07-16 A |  | 0% → 100% | 2d → none |  |
| 13 | Supervision y pruebas de Acondicionamiento e infraestructura sala | 2008-07-18 A | 2008-07-18 A |  | 0% → 100% | 0d → none |  |
| 14 | **Colocación de Mobiliario** | 2008-07-21 → 2008-08-12 A (+22d) | 2008-07-30 → 2008-08-21 A (+22d) |  | 0% → 100% | 2d → none |  |
| 15 | Mesas | 2008-07-21 → 2008-08-12 A (+22d) | 2008-07-24 → 2008-08-15 A (+22d) |  | 0% → 100% | 2d → none | constraint none → start no earlier than 2008-08-11 |
| 16 | Sillas | 2008-07-25 → 2008-08-18 A (+24d) | 2008-07-30 → 2008-08-21 A (+22d) |  | 0% → 100% | 2d → none | constraint none → start no earlier than 2008-08-11 |
| 17 | Escritorio | 2008-07-21 → 2008-08-12 A (+22d) | 2008-07-22 → 2008-08-13 A (+22d) |  | 0% → 100% | 8d → none | constraint none → start no earlier than 2008-08-11 |
| 18 | **Instalación Y Configuración De Equipos** | 2008-08-04 → 2008-08-22 A (+18d) | 2008-08-27 → 2008-09-16 A (+20d) |  | 0% → 100% | 0d → none |  |
| 19 | Instalación de equipos (PCs y Video) | 2008-08-04 → 2008-08-22 A (+18d) | 2008-08-06 → 2008-08-26 A (+20d) |  | 0% → 100% | 0d → none | constraint none → start no earlier than 2008-08-11 |
| 20 | Configuración de Conexión a Red | 2008-08-07 → 2008-08-27 A (+20d) | 2008-08-13 → 2008-09-02 A (+20d) |  | 0% → 100% | 0d → none | constraint none → start no earlier than 2008-08-11 |
| 21 | Actualización de Software | 2008-08-14 → 2008-09-03 A (+20d) | 2008-08-20 → 2008-09-09 A (+20d) |  | 0% → 100% | 0d → none |  |
| 22 | Instalación de Deep Freeze | 2008-08-21 → 2008-09-10 A (+20d) | 2008-08-27 → 2008-09-16 A (+20d) |  | 0% → 100% | 0d → none |  |
| 23 | Supervisión y pruebas de Instalación y Configuración de Equipos | 2008-08-26 A | 2008-08-26 A |  | 0% → 100% | 1d → none |  |
| 24 | **Pago Personal** | 2008-07-18 A | 2008-08-27 A |  | 0% → 100% | 1d → none |  |
| 25 | Pago Semana 3 (ver Flujos Monetarios) | 2008-07-18 A | 2008-07-18 A |  | 0% → 100% | 29d → none |  |
| 26 | Pago Semana 4 (ver Flujos Monetarios) | 2008-07-25 → 2008-08-11 A (+17d) | 2008-07-25 → 2008-08-11 A (+17d) |  | 0% → 100% | 24d → none | constraint start no earlier than 2008-07-25 → start no earlier than 2008-08-11 |
| 27 | Pago Semana 5 (ver Flujos Monetarios) | 2008-08-01 → 2008-08-11 A (+10d) | 2008-08-01 → 2008-08-11 A (+10d) |  | 0% → 100% | 19d → none | constraint start no earlier than 2008-08-01 → start no earlier than 2008-08-11 |
| 28 | Pago Semana 6 (ver Flujos Monetarios) | 2008-08-08 → 2008-08-11 A (+3d) | 2008-08-08 → 2008-08-11 A (+3d) |  | 0% → 100% | 14d → none | constraint start no earlier than 2008-08-08 → start no earlier than 2008-08-11 |
| 29 | Pago Semana 7 (ver Flujos Monetarios) | 2008-08-15 A | 2008-08-15 A |  | 0% → 100% | 9d → none |  |
| 30 | Pago Semana 8 (ver Flujos Monetarios) | 2008-08-22 A | 2008-08-22 A |  | 0% → 100% | 4d → none |  |
| 31 | Pago Semana 9 (ver Flujos Monetarios) | 2008-08-27 A | 2008-08-27 A |  | 0% → 100% | 1d → none |  |
| 32 | **Reuniones** | 2008-07-11 A | 2008-08-27 → 2008-09-16 A (+20d) | 34d → 48d | 0% → 100% | 0d → none |  |
| 33 | Reunión 1: Acondicionamiento Sala | 2008-07-11 A | 2008-07-11 A |  | 0% → 100% | 34d → none |  |
| 34 | Reunión 2: Otros Acond Sala y Muebles | 2008-07-25 → 2008-08-11 A (+17d) | 2008-07-25 → 2008-08-11 A (+17d) |  | 0% → 100% | 24d → none | constraint start no earlier than 2008-07-25 → start no earlier than 2008-08-11 |
| 35 | Reunión 3: Instalación equipos | 2008-08-08 → 2008-08-11 A (+3d) | 2008-08-08 → 2008-08-11 A (+3d) |  | 0% → 100% | 14d → none | constraint start no earlier than 2008-08-08 → start no earlier than 2008-08-11 |
| 36 | Reunión 4: Otros Instal. Equipos | 2008-08-22 A | 2008-08-22 A |  | 0% → 100% | 3d → none |  |
| 37 | Reunión de Cierre e informe final | 2008-08-27 → 2008-09-16 A (+20d) | 2008-08-27 → 2008-09-16 A (+20d) |  | 0% → 100% | 0d → none |  |

## Version 4 (saved 2008-07-18, file Proyecto_Sala_Capacitacio---2n.mpp)

Note of the change: Add everything

Last finish 2008-09-16 → 2008-09-10 (-6d).

Changed:

| ID | Task | Start | Finish | Duration | Other |
| --- | --- | --- | --- | --- | --- |
| 1 | **Sala de Capacitación Informática** |  | 2008-09-16 A → 2008-09-10 A (-6d) | 57d? → 52.5d? |  |
| 14 | **Colocación de Mobiliario** | 2008-08-12 A → 2008-07-21 A (-22d) | 2008-08-21 A → 2008-07-30 A (-22d) |  |  |
| 15 | Mesas | 2008-08-12 A → 2008-07-21 A (-22d) | 2008-08-15 A → 2008-07-24 A (-22d) |  | constraint start no earlier than 2008-08-11 → none |
| 16 | Sillas | 2008-08-18 A → 2008-07-25 A (-24d) | 2008-08-21 A → 2008-07-30 A (-22d) |  | constraint start no earlier than 2008-08-11 → none |
| 17 | Escritorio | 2008-08-12 A → 2008-07-21 A (-22d) | 2008-08-13 A → 2008-07-22 A (-22d) |  | constraint start no earlier than 2008-08-11 → none |
| 18 | **Instalación Y Configuración De Equipos** | 2008-08-22 A → 2008-08-06 A (-16d) | 2008-09-16 A → 2008-09-10 A (-6d) | 18d → 25.5d |  |
| 19 | Instalación de equipos (PCs y Video) | 2008-08-22 A → 2008-08-06 A (-16d) | 2008-08-26 A → 2008-08-20 A (-6d) |  | constraint start no earlier than 2008-08-11 → start no earlier than 2008-08-06 |
| 20 | Configuración de Conexión a Red | 2008-08-27 A → 2008-08-20 A (-7d) | 2008-09-02 A → 2008-08-27 A (-6d) |  | constraint start no earlier than 2008-08-11 → start no earlier than 2008-08-19 |
| 21 | Actualización de Software | 2008-09-03 A → 2008-08-27 A (-7d) | 2008-09-09 A → 2008-09-03 A (-6d) |  | constraint none → start no earlier than 2008-08-19 |
| 22 | Instalación de Deep Freeze | 2008-09-10 A → 2008-09-03 A (-7d) | 2008-09-16 A → 2008-09-10 A (-6d) |  |  |
| 23 | Supervisión y pruebas de Instalación y Configuración de Equipos | 2008-08-26 A → 2008-08-28 A (+2d) | 2008-08-26 A → 2008-08-28 A (+2d) |  | constraint start no earlier than 2008-08-26 → start no earlier than 2008-08-28 |
| 26 | Pago Semana 4 (ver Flujos Monetarios) | 2008-08-11 A → 2008-07-25 A (-17d) | 2008-08-11 A → 2008-07-25 A (-17d) |  | constraint start no earlier than 2008-08-11 → start no earlier than 2008-07-25 |
| 27 | Pago Semana 5 (ver Flujos Monetarios) | 2008-08-11 A → 2008-08-19 A (+8d) | 2008-08-11 A → 2008-08-19 A (+8d) |  | constraint start no earlier than 2008-08-11 → start no earlier than 2008-08-19 |
| 28 | Pago Semana 6 (ver Flujos Monetarios) | 2008-08-11 A → 2008-08-08 A (-3d) | 2008-08-11 A → 2008-08-08 A (-3d) |  | constraint start no earlier than 2008-08-11 → start no earlier than 2008-08-08 |
| 29 | Pago Semana 7 (ver Flujos Monetarios) | 2008-08-15 A → 2008-08-19 A (+4d) | 2008-08-15 A → 2008-08-19 A (+4d) |  | constraint start no earlier than 2008-08-15 → start no earlier than 2008-08-19 |
| 32 | **Reuniones** |  | 2008-09-16 A → 2008-09-10 A (-6d) | 48d → 43.5d |  |
| 34 | Reunión 2: Otros Acond Sala y Muebles | 2008-08-11 A → 2008-07-25 A (-17d) | 2008-08-11 A → 2008-07-25 A (-17d) |  | constraint start no earlier than 2008-08-11 → start no earlier than 2008-07-25 |
| 35 | Reunión 3: Instalación equipos | 2008-08-11 A → 2008-08-08 A (-3d) | 2008-08-11 A → 2008-08-08 A (-3d) |  | constraint start no earlier than 2008-08-11 → start no earlier than 2008-08-08 |
| 37 | Reunión de Cierre e informe final | 2008-09-16 A → 2008-09-10 A (-6d) | 2008-09-16 A → 2008-09-10 A (-6d) |  |  |
